# Gantt EPSA

How a schedule from GanttProject changed from version to version. A marks actual dates.

## Version 1 (saved 2019-10-05)

Note of the change: Management

| ID | WBS | Task | Duration | Start | Finish | Predecessors | Complete |
| --- | --- | --- | --- | --- | --- | --- | --- |
| 1 | 1 | **Tops** | 363d | 2019-06-27 | 2020-06-23 |  |  |
| 2 |  | Top Appro | 0d | 2019-06-27 | 2019-06-27 |  |  |
| 3 |  | Top Saison | 0d | 2019-09-30 | 2019-09-30 |  |  |
| 4 |  | Top Synthèse | 0d | 2019-10-16 | 2019-10-16 |  |  |
| 5 |  | Top Copeau 1 | 0d | 2019-11-13 | 2019-11-13 |  |  |
| 6 |  | Top Copeau 2 | 0d | 2019-11-20 | 2019-11-20 |  |  |
| 7 |  | Top Organe | 0d | 2020-02-05 | 2020-02-05 |  |  |
| 8 |  | Top Véhicule | 0d | 2020-02-19 | 2020-02-19 |  |  |
| 9 |  | Top Moteur | 0d | 2020-03-04 | 2020-03-04 |  |  |
| 10 |  | Top Qualif | 0d | 2020-03-17 | 2020-03-17 |  |  |
| 11 |  | Top Compet | 0d | 2020-06-24 | 2020-06-24 |  |  |
| 12 | 2 | **Vacances ECL** | 127d | 2019-10-26 | 2020-02-29 |  |  |
| 13 |  | Toussaint | 9d | 2019-10-26 | 2019-11-03 |  |  |
| 14 |  | Noel | 16d | 2019-12-21 | 2020-01-05 |  |  |
| 15 |  | Hivers | 1d | 2020-02-29 | 2020-02-29 |  |  |
| 16 | 3 | **Vacances partenaires** | 341d | 2019-10-26 | 2020-09-30 |  |  |
| 17 | 3.1 | **Giraudière** | 72d | 2019-10-26 | 2020-01-05 |  |  |
| 18 |  | Toussaint | 9d | 2019-10-26 | 2019-11-03 |  |  |
| 19 |  | Noel | 16d | 2019-12-21 | 2020-01-05 |  |  |
| 20 |  | Boisard | 99d | 2020-06-24 | 2020-09-30 |  |  |
| 21 | 4 | **Global** | 363d | 2019-06-27 | 2020-06-23 |  |  |
| 22 |  | Livrables | 363d | 2019-06-27 | 2020-06-23 | 2, 11FF |  |
| 23 |  | Carnet de conception | 51d | 2019-08-01 | 2019-09-20 |  |  |
| 24 |  | Nomenclature | 51d | 2019-08-01 | 2019-09-20 |  |  |
| 25 | 5 | **LAS** | 117d | 2019-08-19 | 2019-12-13 |  | 15% |
| 26 | 5.1 | **Cinématique** | 56d | 2019-08-19 | 2019-10-13 |  | 86% |
| 27 |  | Gabarit de châssis | 14d | 2019-09-16 | 2019-09-29 |  | 100% |
| 28 |  | Points de LAS avant | 42d | 2019-08-19 | 2019-09-29 |  | 100% |
| 29 |  | Points de LAS arrière | 35d | 2019-08-26 | 2019-09-29 |  | 100% |
| 30 |  | Seconde itération | 14d | 2019-09-30 | 2019-10-13 | 28, 29 |  |
| 31 | 5.2 | **Cas de charge** | 52d | 2019-09-23 | 2019-11-13 |  | 5% |
| 32 |  | Paul Clauzel | 3d | 2019-09-23 | 2019-09-25 |  | 100% |
| 33 |  | Modèle | 11d | 2019-09-26 | 2019-10-06 | 32 |  |
| 34 |  | Cas de charge | 14d | 2019-10-07 | 2019-10-20 | 33 |  |
| 35 |  | Vérification | 7d | 2019-10-21 | 2019-10-27 | 34 |  |
| 36 |  | Itérations | 7d | 2019-10-28 | 2019-11-03 | 35 |  |
| 37 |  | Fin des cas de charges | 10d | 2019-11-04 | 2019-11-13 | 36 |  |
| 38 | 5.3 | **Roue équipée** | 117d | 2019-08-19 | 2019-12-13 |  | 12% |
| 39 |  | Choix des pneus | 12d | 2019-08-19 | 2019-08-30 | 28SS | 100% |
| 40 |  | Architecture | 7d | 2019-10-14 | 2019-10-20 |  |  |
| 41 |  | Modifications | 7d | 2019-10-14 | 2019-10-20 | 40SS |  |
| 42 |  | Frette de frein | 7d | 2019-10-21 | 2019-10-27 | 41 |  |
| 43 |  | Ebauche CATIA | 14d | 2019-10-28 | 2019-11-10 | 42 |  |
| 44 |  | Retour points de LAS | 14d | 2019-10-28 | 2019-11-10 | 43SS |  |
| 45 |  | Optimisation | 26d | 2019-11-11 | 2019-12-06 | 43 |  |
| 46 |  | Fabricabilité | 7d | 2019-12-07 | 2019-12-13 | 45 |  |
| 47 | 5.4 | **Triangles** | 56d | 2019-10-07 | 2019-12-01 |  |  |
| 48 |  | Choix réglage | 7d | 2019-10-07 | 2019-10-13 |  |  |
| 49 |  | Choix rotules | 7d | 2019-10-14 | 2019-10-20 | 48 |  |
| 50 |  | Choix entretoises | 7d | 2019-10-14 | 2019-10-20 | 48 |  |
| 51 |  | Dimensionnement biellettes | 7d | 2019-10-21 | 2019-10-27 | 48, 49 |  |
| 52 |  | Dimensionnement visserie | 7d | 2019-10-14 | 2019-10-20 | 48 |  |
| 53 |  | Dimenssionnement des tubes | 7d | 2019-10-21 | 2019-10-27 | 34, 48 |  |
| 54 |  | Dimensionnement des inserts | 7d | 2019-10-28 | 2019-11-03 | 53 |  |
| 55 |  | Essais collages | 28d | 2019-11-04 | 2019-12-01 | 54 |  |
| 56 | 5.5 | **Suspension** | 21d | 2019-09-30 | 2019-10-20 |  |  |
| 57 |  | Basculeurs | 14d | 2019-09-30 | 2019-10-13 |  |  |
| 58 |  | Pivot | 7d | 2019-10-14 | 2019-10-20 | 57 |  |
| 59 | 5.6 | **Anti-roulis** | 28d | 2019-09-30 | 2019-10-27 |  |  |
| 60 |  | Modèle efforts | 14d | 2019-09-30 | 2019-10-13 |  |  |
| 61 |  | Dimenssionnement de la barre de torsion | 14d | 2019-10-14 | 2019-10-27 | 60 |  |
| 62 |  | Couteaux | 14d | 2019-09-30 | 2019-10-13 |  |  |
| 63 |  | Pivot | 7d | 2019-10-14 | 2019-10-20 | 62 |  |
| 64 |  | Coussinets | 7d | 2019-10-21 | 2019-10-27 | 63 |  |
| 65 | 5.7 | **Direction** | 49d | 2019-09-23 | 2019-11-10 |  | 14% |
| 66 |  | Cinématique | 14d | 2019-09-23 | 2019-10-06 |  | 50% |
| 67 |  | Cardan | 14d | 2019-10-07 | 2019-10-20 | 66 |  |
| 68 |  | Colonne de direction | 7d | 2019-10-21 | 2019-10-27 | 67 |  |
| 69 |  | Finalisation cinématique | 7d | 2019-10-28 | 2019-11-03 | 28, 68 |  |
| 70 |  | Pivot et manchon | 7d | 2019-11-04 | 2019-11-10 | 69 |  |

| ID | WBS | Task | Duration | Start | Finish | Predecessors | Complete |
| --- | --- | --- | --- | --- | --- | --- | --- |
| 71 | 5.8 | **Freinage** | 56d | 2019-09-23 | 2019-11-17 |  | 9% |
| 72 |  | Répartition freinage | 14d | 2019-09-23 | 2019-10-06 |  | 50% |
| 73 |  | Dimenssionnement disques | 21d | 2019-10-07 | 2019-10-27 | 72 |  |
| 74 |  | Dimenssionnement étrier | 21d | 2019-10-07 | 2019-10-27 | 72 |  |
| 75 |  | Durites | 21d | 2019-10-28 | 2019-11-17 | 74 |  |
| 76 | 5.9 | **Pédalier** | 49d | 2019-09-16 | 2019-11-03 |  |  |
| 77 |  | Accélérateur | 35d | 2019-09-16 | 2019-10-20 |  |  |
| 78 |  | Frein | 35d | 2019-09-30 | 2019-11-03 |  |  |
| 79 | 6 | **Frame** | 100d | 2019-08-12 | 2019-11-19 |  | 10% |
| 80 | 6.1 | **Structure tubulaire** | 98d | 2019-08-12 | 2019-11-17 |  | 23% |
| 81 |  | Premières esquisses | 28d | 2019-08-12 | 2019-09-08 |  | 100% |
| 82 |  | Points de LAS | 21d | 2019-09-09 | 2019-09-29 | 81 | 30% |
| 83 |  | Moteur - Echappement | 21d | 2019-09-09 | 2019-09-29 | 81 |  |
| 84 |  | Finalisation filaire | 14d | 2019-09-16 | 2019-09-29 |  |  |
| 85 |  | Seconde itération | 14d | 2019-09-30 | 2019-10-13 | 82, 83, 84 |  |
| 86 |  | Vérif règlement | 7d | 2019-10-14 | 2019-10-20 | 85 |  |
| 87 |  | Raideur en torsions | 14d | 2019-10-14 | 2019-10-27 |  |  |
| 88 |  | Autres cas de charge | 14d | 2019-10-21 | 2019-11-03 |  |  |
| 89 |  | Vérif règlement | 14d | 2019-11-04 | 2019-11-17 | 87, 88 |  |
| 90 |  | Ergonomie | 49d | 2019-09-30 | 2019-11-17 | 89FF |  |
| 91 | 6.3 | **Equipements** | 58d | 2019-09-23 | 2019-11-19 |  |  |
| 92 |  | Suivi des chappes | 58d | 2019-09-23 | 2019-11-19 | 6FF |  |
| 93 |  | Anti-intrusion plate | 35d | 2019-10-14 | 2019-11-17 | 85 |  |
| 94 |  | Pare-feu | 35d | 2019-10-14 | 2019-11-17 | 85 |  |
| 95 |  | Fond plat | 35d | 2019-10-14 | 2019-11-17 | 85 |  |
| 96 | 7 | **Aéro** | 91d | 2019-08-19 | 2019-11-17 |  | 19% |
| 97 | 7.1 | **Fabrication** | 40d | 2019-09-04 | 2019-10-13 |  | 57% |
| 98 | 7.1.1 | **Démarchage** | 40d | 2019-09-04 | 2019-10-13 |  | 57% |
| 99 |  | Rédaction du mail | 7d | 2019-09-04 | 2019-09-10 |  | 100% |
| 100 |  | Recherche de contacts | 40d | 2019-09-04 | 2019-10-13 |  | 50% |
| 101 | 7.2 | **Méthode numérique** | 35d | 2019-08-19 | 2019-09-22 |  |  |
| 102 |  | Simulation mécanique | 35d | 2019-08-19 | 2019-09-22 |  |  |
| 103 | 7.3 | **Carrosserie** | 63d | 2019-09-16 | 2019-11-17 |  | 22% |
| 104 |  | REX et étude concurrence | 14d | 2019-09-16 | 2019-09-29 |  | 100% |
| 105 |  | Premier version | 14d | 2019-09-30 | 2019-10-13 | 84, 104 |  |
| 106 |  | Optimisation aéro | 14d | 2019-10-14 | 2019-10-27 | 105 |  |
| 107 |  | Seconde itération | 7d | 2019-10-28 | 2019-11-03 | 85, 106 |  |
| 108 |  | Fixation aéro | 14d | 2019-11-04 | 2019-11-17 | 107 |  |
| 109 | 7.4 | **Ailes** | 57d | 2019-09-09 | 2019-11-04 |  | 12% |
| 110 |  | Étude aéro arrière | 28d | 2019-09-09 | 2019-10-06 |  | 50% |
| 111 |  | Étude aéro avant | 36d | 2019-09-30 | 2019-11-04 |  |  |
| 112 |  | Volume enveloppe | 7d | 2019-09-30 | 2019-10-06 |  |  |
| 113 |  | Cas de charges des ailes | 7d | 2019-09-30 | 2019-10-06 |  |  |
| 114 |  | Structure interne | 21d | 2019-10-07 | 2019-10-27 | 113 |  |
| 115 |  | Méthode d'attache arrière | 14d | 2019-10-07 | 2019-10-20 | 113 |  |
| 116 | 7.5 | **Ouies** | 14d | 2019-09-30 | 2019-10-13 |  |  |
| 117 |  | Concept ouies | 14d | 2019-09-30 | 2019-10-13 |  |  |
| 118 | 7.6 | **Diffuseur** | 14d | 2019-09-30 | 2019-10-13 |  |  |
| 119 |  | Concept aéro | 14d | 2019-09-30 | 2019-10-13 |  |  |
| 120 | 8 | **Motorisation** | 28d | 2019-09-30 | 2019-10-27 |  | 4% |
| 121 | 8.1 | **Bride guillotine** | 14d | 2019-09-30 | 2019-10-13 |  |  |
| 122 |  | Analyser le diaphragme | 14d | 2019-09-30 | 2019-10-13 |  |  |
| 123 |  | CdCF bride guillotine | 7d | 2019-09-30 | 2019-10-06 |  |  |
| 124 |  | Choisir l'architecture | 7d | 2019-10-07 | 2019-10-13 |  |  |
| 125 | 8.2 | **Admission** | 14d | 2019-09-30 | 2019-10-13 |  |  |
| 126 |  | Longueur des tubulures | 7d | 2019-09-30 | 2019-10-06 |  |  |
| 127 |  | Contacter Michele Salvia | 7d | 2019-09-30 | 2019-10-06 |  |  |
| 128 |  | Choix matériau | 7d | 2019-10-07 | 2019-10-13 | 127 |  |
| 129 |  | Début du CATIA de l'admission | 7d | 2019-09-30 | 2019-10-06 |  |  |
| 130 |  | CatPart v1 | 7d | 2019-10-07 | 2019-10-13 | 129 |  |
| 131 | 8.3 | **Echappement** | 14d | 2019-09-30 | 2019-10-13 |  |  |
| 132 |  | Démarcher des partenaire | 7d | 2019-09-30 | 2019-10-06 |  |  |
| 133 |  | Trouver le diamètre Yoshimura | 7d | 2019-09-30 | 2019-10-06 |  |  |
| 134 |  | Récupération de celui d'Optimus?? | 14d | 2019-09-30 | 2019-10-13 |  |  |
| 135 | 8.4 | **Carto** | 7d | 2019-10-21 | 2019-10-27 |  |  |
| 136 |  | Prevoir passage au banc de Givors | 7d | 2019-10-21 | 2019-10-27 |  |  |
| 137 | 8.5 | **Refroidissement** | 14d | 2019-09-30 | 2019-10-13 |  | 25% |
| 138 |  | Terminer le choix ouies, radiateur | 7d | 2019-09-30 | 2019-10-06 |  | 100% |
| 139 |  | Etude refroidissement | 7d | 2019-10-07 | 2019-10-13 |  |  |
| 140 |  | Passage de vitesse | 7d | 2019-10-07 | 2019-10-13 |  |  |

| ID | WBS | Task | Duration | Start | Finish | Predecessors | Complete |
| --- | --- | --- | --- | --- | --- | --- | --- |
| 141 |  | Règlement moteur | 7d | 2019-10-07 | 2019-10-13 |  |  |
| 142 | 8.6 | **Circuit d'essence** | 7d | 2019-10-07 | 2019-10-13 |  |  |
| 143 |  | Commande rle tube de remplissage | 7d | 2019-10-07 | 2019-10-13 |  |  |
| 144 |  | Circuit d'essence | 7d | 2019-10-07 | 2019-10-13 |  |  |
| 145 | 8.7 | **Transmission secondaire** | 14d | 2019-09-30 | 2019-10-13 |  |  |
| 146 |  | Analyser le déplacement des axes | 7d | 2019-09-30 | 2019-10-06 |  |  |
| 147 |  | Préssenter les cas de charges | 7d | 2019-09-30 | 2019-10-06 |  |  |
| 148 |  | CdCF quantifié du système | 7d | 2019-09-30 | 2019-10-06 |  |  |
| 149 |  | Efforts subis par les axes de transmission | 7d | 2019-10-07 | 2019-10-13 |  |  |
| 150 | 9 | **SEISM** | 84d | 2019-09-02 | 2019-11-24 |  | 19% |
| 151 | 9.1 | **Faisceau** | 84d | 2019-09-02 | 2019-11-24 |  | 31% |
| 152 |  | Architecture faisceau | 14d | 2019-09-02 | 2019-09-15 |  | 100% |
| 153 |  | Schema faisceau | 28d | 2019-09-16 | 2019-10-13 | 152 | 100% |
| 154 |  | Batterie | 14d | 2019-09-30 | 2019-10-13 |  |  |
| 155 |  | Dimensionnement câble | 14d | 2019-10-07 | 2019-10-20 |  |  |
| 156 |  | Placer les boîtes | 14d | 2019-10-14 | 2019-10-27 |  |  |
| 157 |  | Contacter Souriaux | 7d | 2019-09-16 | 2019-09-22 |  |  |
| 158 |  | Choix connecteur | 14d | 2019-10-14 | 2019-10-27 | 157 |  |
| 159 |  | Modèle CATIA | 28d | 2019-10-28 | 2019-11-24 | 156, 158 |  |
| 160 | 9.2 | **Passage de rapport** | 70d | 2019-09-02 | 2019-11-10 |  | 5% |
| 161 |  | Dimensionnement moteur | 28d | 2019-09-02 | 2019-09-29 |  | 10% |
| 162 |  | Dimensionnement réducteur | 28d | 2019-09-02 | 2019-09-29 |  | 10% |
| 163 |  | Reprendre le code | 28d | 2019-09-30 | 2019-10-27 | 161, 162 |  |
| 164 |  | Shield | 28d | 2019-10-14 | 2019-11-10 |  |  |

## Version 2 (saved 2019-10-05)

Note of the change: Management

Last finish stays 2020-09-30.

Added:

| ID | Task | Duration | Start | Finish |
| --- | --- | --- | --- | --- |
| 12 | **Vacances** | 341d | 2019-10-26 | 2020-09-30 |

Removed: 140 Passage de vitesse; 141 Règlement moteur

Changed:

| ID | Task | Start | Finish | Duration | Complete | Predecessors |
| --- | --- | --- | --- | --- | --- | --- |
| 121 | **Motorisation** |  | 2019-10-27 → 2019-11-19 (+23d) | 28d → 51d | 4% → 8% |  |
| 136 | **Carto** | 2019-10-21 → 2019-11-13 (+23d) | 2019-10-27 → 2019-11-19 (+23d) |  |  |  |
| 137 | Prevoir passage au banc de Givors | 2019-10-21 → 2019-11-13 (+23d) | 2019-10-27 → 2019-11-19 (+23d) |  |  | none → 5 |
| 138 | **Refroidissement** |  |  |  | 25% → 50% |  |

## Version 3 (saved 2019-10-08)

Note of the change: Tout

Last finish stays 2020-09-30.

Added:

| ID | Task | Duration | Start | Finish | Predecessors | Resources |
| --- | --- | --- | --- | --- | --- | --- |
| 79 | Choix des liaisons mécaniques | 7d | 2019-10-09 | 2019-10-15 | 78 | JMN; JRT |
| 80 | Finir dimensionnement | 14d | 2019-10-16 | 2019-10-29 | 79 | JMN; JRT |
| 81 | Finir conception | 7d | 2019-10-30 | 2019-11-05 | 80 | JMN; JRT |
| 82 | Finir maquette | 7d | 2019-11-06 | 2019-11-12 | 81 | JMN; JRT |

Removed: 78 Accélérateur

Changed:

| ID | Task | Start | Finish | Duration | Complete | Other |
| --- | --- | --- | --- | --- | --- | --- |
| 26 | **LAS** |  |  |  | 15% → 16% |  |
| 77 | **Pédalier** | 2019-09-16 → 2019-10-02 (+16d) | 2019-11-03 → 2019-11-12 (+9d) | 49d → 42d |  |  |
| 78 | Règlement et état de l'Art | 2019-09-30 → 2019-10-02 (+2d) | 2019-11-03 → 2019-10-08 (-26d) | 35d → 7d |  | was named Frein; resources JMN → JMN; JRT |

## Version 4 (saved 2019-10-11)

Note of the change: MG_Mail_Gantt

Last finish stays 2020-09-30.

Added:

| ID | Task | Duration | Start | Finish | Resources |
| --- | --- | --- | --- | --- | --- |
| 129 | Dimensionner le système | 7d | 2019-10-14 | 2019-10-20 | CAD |
| 130 | CatPart | 7d | 2019-10-14 | 2019-10-20 | CAD |
| 137 | Audit Volvo | 0d | 2019-10-15 | 2019-10-15 | TLS |
| 142 | Suivre la modification du châssis en accord avec l'échappement | 14d | 2019-10-14 | 2019-10-27 | MJT |
| 148 | Dimensionner le radiateur | 7d | 2019-10-14 | 2019-10-20 | ASE |
| 152 | Ou placer le circuit | 7d | 2019-10-14 | 2019-10-20 | ASE |

Changed:

| ID | Task | Finish | Duration | Complete |
| --- | --- | --- | --- | --- |
| 124 | **Motorisation** |  |  | 8% → 5% |
| 125 | **Bride guillotine** | 2019-10-13 → 2019-10-20 (+7d) | 14d → 21d |  |
| 131 | **Admission** | 2019-10-13 → 2019-10-14 (+1d) | 14d → 15d |  |
| 138 | **Echappement** | 2019-10-13 → 2019-10-27 (+14d) | 14d → 28d |  |
| 145 | **Refroidissement** | 2019-10-13 → 2019-10-20 (+7d) | 14d → 21d | 50% → 33% |
| 149 | **Circuit d'essence** | 2019-10-13 → 2019-10-20 (+7d) | 7d → 14d |  |
