# Gantt EPSA

How a schedule from GanttProject changed from version to version. A marks actual dates.

## Version 1 (saved 2019-07-14)

Note of the change: Gantt / Mail

| ID | WBS | Task | Duration | Start | Finish | Predecessors | Complete |
| --- | --- | --- | --- | --- | --- | --- | --- |
| 1 | 1 | **Tops** | 320d | 2019-04-03 | 2020-06-23 |  |  |
| 2 |  | Top Projet | 0d | 2019-04-03 | 2019-04-03 |  |  |
| 3 |  | RVP2 | 0d | 2019-04-03 | 2019-04-03 |  |  |
| 4 |  | Roll Out | 0d | 2019-04-10 | 2019-04-10 |  |  |
| 5 |  | Top Prédim | 0d | 2019-06-12 | 2019-06-12 |  |  |
| 6 |  | Top Appro | 0d | 2019-06-27 | 2019-06-27 |  |  |
| 7 |  | Top Saison | 0d | 2019-09-30 | 2019-09-30 |  |  |
| 8 |  | Top Maquette | 0d | 2019-05-01 | 2019-05-01 |  |  |
| 9 |  | Top Synthèse | 0d | 2019-10-02 | 2019-10-02 |  |  |
| 10 |  | Top Copeau 1 | 0d | 2019-11-06 | 2019-11-06 |  |  |
| 11 |  | Top Copeau 2 | 0d | 2019-11-20 | 2019-11-20 |  |  |
| 12 |  | Top Organe | 0d | 2020-02-05 | 2020-02-05 |  |  |
| 13 |  | Top Véhicule | 0d | 2020-02-19 | 2020-02-19 |  |  |
| 14 |  | Top Moteur | 0d | 2020-03-04 | 2020-03-04 |  |  |
| 15 |  | Top Qualif | 0d | 2020-03-17 | 2020-03-17 |  |  |
| 16 |  | Top Compet | 0d | 2020-06-24 | 2020-06-24 |  |  |
| 17 |  | Livrables | 12d | 2019-05-22 | 2019-06-06 |  |  |
| 18 |  | Carnet de conception | 40d | 2019-07-01 | 2019-08-23 |  |  |
| 19 | 4 | **Frame** | 101d | 2019-05-22 | 2019-10-09 |  | 32% |
| 20 |  | Continuer test chassis surfacique | 33d | 2019-05-22 | 2019-07-05 |  | 80% |
| 21 |  | Dessin préliminaire | 5d | 2019-07-15 | 2019-07-19 |  | 50% |
| 22 |  | Cellule avant | 10d | 2019-08-01 | 2019-08-14 |  |  |
| 23 |  | Cellule arrière | 10d | 2019-08-15 | 2019-08-28 | 22 |  |
| 24 |  | Cellule arrière terminée | 10d | 2019-08-29 | 2019-09-11 | 23 |  |
| 25 |  | Châssis complet | 20d | 2019-09-12 | 2019-10-09 | 24 |  |
| 26 | 5 | **Aéro** | 70d | 2019-07-01 | 2019-10-04 |  | 1% |
| 27 | 5.1 | **Design du kit** | 70d | 2019-07-01 | 2019-10-04 |  |  |
| 28 | 5.1.1 | **Aile arrière** | 21d | 2019-07-01 | 2019-07-29 |  |  |
| 29 |  | Methode de fixation | 10d | 2019-07-01 | 2019-07-12 |  |  |
| 30 |  | Etude concurrence FSN | 2d | 2019-07-12 | 2019-07-15 |  |  |
| 31 |  | Insert aile arrière | 10d | 2019-07-16 | 2019-07-29 | 29, 30 |  |
| 32 | 5.1.2 | **Aile avant** | 50d | 2019-07-15 | 2019-09-20 |  |  |
| 33 |  | Etude concurrence FSN | 30d | 2019-07-15 | 2019-08-23 |  |  |
| 34 |  | Dessin de l'aile en collaboration avec les italiens | 10d | 2019-07-15 | 2019-07-26 |  |  |
| 35 |  | Methode de fixation | 10d | 2019-07-29 | 2019-08-09 | 34 |  |
| 36 |  | Insert ailes avant | 15d | 2019-08-12 | 2019-08-30 | 35 |  |
| 37 |  | Déflection | 30d | 2019-08-12 | 2019-09-20 | 35 |  |
| 38 | 5.1.3 | **Ouies** | 55d | 2019-07-01 | 2019-09-13 |  |  |
| 39 |  | Concept ouies | 10d | 2019-07-01 | 2019-07-12 |  |  |
| 40 |  | Dessin final | 10d | 2019-09-02 | 2019-09-13 |  |  |
| 41 |  | Carrosserie | 15d | 2019-09-02 | 2019-09-20 |  |  |
| 42 |  | Fond-plat | 10d | 2019-09-23 | 2019-10-04 | 41 |  |
| 43 | 5.2 | **Prototypage** | 10d | 2019-09-02 | 2019-09-13 |  | 10% |
| 44 |  | Proto toile cirée | 10d | 2019-09-02 | 2019-09-13 |  | 10% |
| 45 | 6 | **LAS** | 60d | 2019-07-01 | 2019-09-20 |  | 3% |
| 46 | 6.1 | **Point de LAS** | 35d | 2019-07-01 | 2019-08-16 |  |  |
| 47 |  | LAS avant | 30d | 2019-07-01 | 2019-08-09 |  |  |
| 48 |  | LAS arrière | 30d | 2019-07-08 | 2019-08-16 |  |  |
| 49 | 6.2 | **Pneu** | 25d | 2019-07-01 | 2019-08-02 |  | 30% |
| 50 |  | Identifier les pneus dispo | 15d | 2019-07-01 | 2019-07-19 |  | 50% |
| 51 |  | Choisir les pneus | 10d | 2019-07-22 | 2019-08-02 | 50 |  |
| 52 | 6.3 | **Suspension** | 15d | 2019-08-19 | 2019-09-06 |  |  |
| 53 |  | Choix composants | 15d | 2019-08-19 | 2019-09-06 | 48 |  |
| 54 | 6.4 | **Barre anti rouli** | 15d | 2019-08-19 | 2019-09-06 |  |  |
| 55 |  | Conception détaillée | 15d | 2019-08-19 | 2019-09-06 | 48 |  |
| 56 | 6.5 | **Colonne de direction** | 60d | 2019-07-01 | 2019-09-20 |  |  |
| 57 |  | Se renseigner | 5d | 2019-07-01 | 2019-07-05 |  |  |
| 58 |  | Nombre de cardan | 10d | 2019-07-03 | 2019-07-16 |  |  |
| 59 |  | Colonne crémaillère | 10d | 2019-07-17 | 2019-07-30 | 58 |  |
| 60 |  | Biellette | 15d | 2019-09-02 | 2019-09-20 |  |  |
| 61 | 6.6 | **Système de freinage** | 60d | 2019-07-01 | 2019-09-20 |  |  |
| 62 |  | Contraintes | 5d | 2019-07-01 | 2019-07-05 |  |  |
| 63 |  | Système de freinage | 35d | 2019-07-08 | 2019-08-23 | 62 |  |
| 64 |  | Pédalier | 20d | 2019-08-26 | 2019-09-20 | 63 |  |
| 65 | 7 | **Motorisation** | 65d | 2019-07-01 | 2019-09-27 |  | 7% |
| 66 | 7.1 | **Moteur** | 10d | 2019-07-15 | 2019-07-26 |  |  |
| 67 |  | Position du moteur | 10d | 2019-07-15 | 2019-07-26 |  |  |
| 68 | 7.2 | **Admission** | 65d | 2019-07-01 | 2019-09-27 |  | 6% |
| 69 |  | Architecture à définir | 15d | 2019-07-01 | 2019-07-19 |  | 50% |
| 70 |  | Bride guillotine | 50d | 2019-07-22 | 2019-09-27 | 69 |  |

| ID | WBS | Task | Duration | Start | Finish | Predecessors | Complete |
| --- | --- | --- | --- | --- | --- | --- | --- |
| 71 |  | Admission | 50d | 2019-07-22 | 2019-09-27 | 69 |  |
| 72 | 7.3 | **Echappement** | 45d | 2019-07-01 | 2019-08-30 |  | 11% |
| 73 |  | Architecture à définir | 5d | 2019-07-01 | 2019-07-05 |  | 100% |
| 74 |  | Dessiner l'échappement | 40d | 2019-07-08 | 2019-08-30 | 73 |  |
| 75 | 7.4 | **Refroidissement** | 18d | 2019-07-01 | 2019-07-24 |  | 27% |
| 76 |  | Architecture à définir | 5d | 2019-07-01 | 2019-07-05 |  | 100% |
| 77 |  | Dimenssionnement | 13d | 2019-07-08 | 2019-07-24 | 76 |  |
| 78 | 7.5 | **Transmission secondaire** | 45d | 2019-07-01 | 2019-08-30 |  |  |
| 79 |  | Architecture | 45d | 2019-07-01 | 2019-08-30 |  |  |
| 80 | 8 | **SEISM** | 86d | 2019-07-01 | 2019-10-28 |  |  |
| 81 | 8.1 | **Démarchage** | 5d | 2019-07-01 | 2019-07-05 |  |  |
| 82 |  | Relancer pour la caméra | 5d | 2019-07-01 | 2019-07-05 |  |  |
| 83 | 8.2 | **Faisceau** | 40d | 2019-07-01 | 2019-08-23 |  |  |
| 84 |  | Architecture Faisceau | 5d | 2019-07-01 | 2019-07-05 |  |  |
| 85 |  | Faisceau LV | 5d | 2019-07-01 | 2019-07-05 |  |  |
| 86 |  | Faisceau HV | 15d | 2019-07-08 | 2019-07-26 | 84, 85 |  |
| 87 |  | Module Electrical CATIA | 20d | 2019-07-29 | 2019-08-23 | 85, 86 |  |
| 88 |  | Batterie | 10d | 2019-07-29 | 2019-08-09 | 86 |  |
| 89 | 8.3 | **Tableau de bord** | 30d | 2019-07-08 | 2019-08-16 |  |  |
| 90 |  | Architecture | 15d | 2019-07-08 | 2019-07-26 |  |  |
| 91 |  | Test des écrans | 15d | 2019-07-29 | 2019-08-16 | 90 |  |
| 92 | 8.4 | **Passage de rapport** | 35d | 2019-07-01 | 2019-08-16 |  |  |
| 93 |  | Dimensionnement moteur | 15d | 2019-07-01 | 2019-07-19 |  |  |
| 94 |  | Commande de boîte | 20d | 2019-07-22 | 2019-08-16 | 93 |  |
| 95 | 8.5 | **Télémétrie** | 40d | 2019-07-01 | 2019-08-23 |  |  |
| 96 |  | Architecture | 5d | 2019-07-01 | 2019-07-05 |  |  |
| 97 |  | Choix capteurs | 35d | 2019-07-08 | 2019-08-23 | 96 |  |
| 98 | 8.6 | **Communication pilote-stand** | 20d | 2019-10-01 | 2019-10-28 |  |  |
| 99 |  | Architecture | 20d | 2019-10-01 | 2019-10-28 |  |  |

## Version 2 (saved 2019-07-21)

Note of the change: MG

Last finish stays 2020-06-24.

Added:

| ID | Task | Duration | Start | Finish | Resources |
| --- | --- | --- | --- | --- | --- |
| 19 | Nomenclature | 30d | 2019-07-18 | 2019-08-28 | TLS |

Changed:

| ID | Task | Start | Finish | Duration |
| --- | --- | --- | --- | --- |
| 47 | **Point de LAS** |  | 2019-08-16 → 2019-08-30 (+14d) | 35d → 45d |
| 48 | LAS avant |  | 2019-08-09 → 2019-08-23 (+14d) | 30d → 40d |
| 49 | LAS arrière |  | 2019-08-16 → 2019-08-30 (+14d) | 30d → 40d |
| 53 | **Suspension** | 2019-08-19 → 2019-09-02 (+14d) | 2019-09-06 → 2019-09-20 (+14d) |  |
| 54 | Choix composants | 2019-08-19 → 2019-09-02 (+14d) | 2019-09-06 → 2019-09-20 (+14d) |  |
| 55 | **Barre anti rouli** | 2019-08-19 → 2019-09-02 (+14d) | 2019-09-06 → 2019-09-20 (+14d) |  |
| 56 | Conception détaillée | 2019-08-19 → 2019-09-02 (+14d) | 2019-09-06 → 2019-09-20 (+14d) |  |
