# Gantt EPSA

How a schedule from GanttProject changed from version to version. A marks actual dates.

## Version 1 (saved 2019-08-24)

Note of the change: Gantt

| ID | WBS | Task | Duration | Start | Finish | Predecessors |
| --- | --- | --- | --- | --- | --- | --- |
| 1 | 1 | **Tops** | 363d | 2019-06-27 | 2020-06-23 |  |
| 2 |  | Top Appro | 0d | 2019-06-27 | 2019-06-27 |  |
| 3 |  | Top Saison | 0d | 2019-09-30 | 2019-09-30 |  |
| 4 |  | Top Synthèse | 0d | 2019-10-02 | 2019-10-02 |  |
| 5 |  | Top Copeau 1 | 0d | 2019-11-06 | 2019-11-06 |  |
| 6 |  | Top Copeau 2 | 0d | 2019-11-20 | 2019-11-20 |  |
| 7 |  | Top Organe | 0d | 2020-02-05 | 2020-02-05 |  |
| 8 |  | Top Véhicule | 0d | 2020-02-19 | 2020-02-19 |  |
| 9 |  | Top Moteur | 0d | 2020-03-04 | 2020-03-04 |  |
| 10 |  | Top Qualif | 0d | 2020-03-17 | 2020-03-17 |  |
| 11 |  | Top Compet | 0d | 2020-06-24 | 2020-06-24 |  |
| 12 |  | Livrables | 363d | 2019-06-27 | 2020-06-23 | 2, 11FF |
| 13 |  | Carnet de conception | 51d | 2019-07-01 | 2019-08-20 |  |
| 14 |  | Nomenclature | 38d | 2019-07-18 | 2019-08-24 |  |
| 15 | 5 | **LAS** | 98d | 2019-08-19 | 2019-11-24 |  |
| 16 | 5.1 | **Cinématique** | 70d | 2019-08-19 | 2019-10-27 |  |
| 17 |  | Points de LAS avant | 14d | 2019-08-19 | 2019-09-01 |  |
| 18 |  | Points de LAS arrière | 21d | 2019-08-26 | 2019-09-15 |  |
| 19 |  | Géométrie de suspension | 35d | 2019-08-26 | 2019-09-29 |  |
| 20 |  | Géométrie d'anti-roulis | 14d | 2019-09-16 | 2019-09-29 |  |
| 21 |  | Seconde itération | 28d | 2019-09-30 | 2019-10-27 | 17, 18, 19, 20 |
| 22 | 5.2 | **Cas de charge** | 66d | 2019-09-02 | 2019-11-06 |  |
| 23 |  | Logiciel? | 4d | 2019-09-02 | 2019-09-05 |  |
| 24 |  | Paul Clauzel | 3d | 2019-09-06 | 2019-09-08 | 23 |
| 25 |  | LAS Auto | 14d | 2019-09-09 | 2019-09-22 | 24 |
| 26 |  | Modèle | 7d | 2019-09-23 | 2019-09-29 | 25 |
| 27 |  | Cas de charge | 14d | 2019-09-30 | 2019-10-13 | 26 |
| 28 |  | Vérification | 7d | 2019-10-14 | 2019-10-20 | 27 |
| 29 |  | Itérations | 7d | 2019-10-21 | 2019-10-27 | 28 |
| 30 |  | Fin des cas de charges | 10d | 2019-10-28 | 2019-11-06 | 29 |
| 31 | 5.3 | **Roue équipée** | 82d | 2019-08-19 | 2019-11-08 |  |
| 32 |  | Choix des pneus | 12d | 2019-08-19 | 2019-08-30 | 17SS |
| 33 |  | Architecture | 7d | 2019-09-02 | 2019-09-08 |  |
| 34 |  | Modifications | 7d | 2019-09-09 | 2019-09-15 | 33 |
| 35 |  | Frette de frein | 7d | 2019-09-16 | 2019-09-22 | 34 |
| 36 |  | Ebauche CATIA | 14d | 2019-09-23 | 2019-10-06 | 35 |
| 37 |  | Retour points de LAS | 14d | 2019-09-30 | 2019-10-13 |  |
| 38 |  | Optimisation | 26d | 2019-10-07 | 2019-11-01 |  |
| 39 |  | Fabricabilité | 7d | 2019-11-02 | 2019-11-08 | 38 |
| 40 | 5.4 | **Triangles** | 84d | 2019-09-02 | 2019-11-24 |  |
| 41 |  | Choix réglage | 7d | 2019-09-16 | 2019-09-22 |  |
| 42 |  | Dimensionnement biellettes | 7d | 2019-09-23 | 2019-09-29 | 41 |
| 43 |  | Dimensionnement visserie | 7d | 2019-09-23 | 2019-09-29 | 41 |
| 44 |  | Choix rotules | 7d | 2019-09-30 | 2019-10-06 | 43 |
| 45 |  | Choix entretoises | 7d | 2019-10-07 | 2019-10-13 | 44 |
| 46 |  | Concertation | 7d | 2019-09-02 | 2019-09-08 |  |
| 47 |  | Dimenssionnement des tubes | 7d | 2019-10-14 | 2019-10-20 | 27, 46 |
| 48 |  | Dimensionnement des inserts | 7d | 2019-10-21 | 2019-10-27 | 47 |
| 49 |  | Essais collages | 28d | 2019-10-28 | 2019-11-24 | 48 |
| 50 | 5.5 | **Suspension** | 70d | 2019-08-19 | 2019-10-27 |  |
| 51 |  | Contacter GTE | 7d | 2019-08-19 | 2019-08-25 | 19SF |
| 52 |  | Pivot | 7d | 2019-09-30 | 2019-10-06 | 19 |
| 53 |  | Basculeurs | 14d | 2019-10-14 | 2019-10-27 |  |
| 54 | 5.6 | **Anti-roulis** | 28d | 2019-09-30 | 2019-10-27 |  |
| 55 |  | Modèle efforts | 14d | 2019-09-30 | 2019-10-13 | 20 |
| 56 |  | Dimenssionnement de la barre de torsion | 14d | 2019-10-14 | 2019-10-27 | 55 |
| 57 |  | Couteaux | 14d | 2019-09-30 | 2019-10-13 | 20 |
| 58 |  | Pivot | 7d | 2019-10-14 | 2019-10-20 | 57 |
| 59 |  | Coussinets | 7d | 2019-10-21 | 2019-10-27 | 58 |
| 60 | 5.7 | **Direction** | 35d | 2019-09-16 | 2019-10-20 |  |
| 61 |  | Cardan | 14d | 2019-09-16 | 2019-09-29 |  |
| 62 |  | Colonne de direction | 7d | 2019-09-30 | 2019-10-06 | 61 |
| 63 |  | Finalisation cinématique | 7d | 2019-10-07 | 2019-10-13 | 17, 62 |
| 64 |  | Pivot et manchon | 7d | 2019-10-14 | 2019-10-20 | 63 |
| 65 | 5.8 | **Freinage** | 21d | 2019-09-16 | 2019-10-06 |  |
| 66 |  | Répartition freinage | 14d | 2019-09-16 | 2019-09-29 |  |
| 67 |  | Dimenssionnement disques | 14d | 2019-09-23 | 2019-10-06 |  |
| 68 |  | Dimenssionnement étrier | 14d | 2019-09-23 | 2019-10-06 |  |
| 69 | 5.9 | **Pédalier** | 49d | 2019-09-16 | 2019-11-03 |  |
| 70 |  | Accélérateur | 35d | 2019-09-16 | 2019-10-20 |  |

| ID | WBS | Task | Duration | Start | Finish | Predecessors | Complete |
| --- | --- | --- | --- | --- | --- | --- | --- |
| 71 |  | Frein | 35d | 2019-09-30 | 2019-11-03 |  |  |
| 72 | 6 | **Frame** | 100d | 2019-08-12 | 2019-11-19 |  | 2% |
| 73 | 6.1 | **Structure tubulaire** | 98d | 2019-08-12 | 2019-11-17 |  | 4% |
| 74 |  | Premières esquisses | 14d | 2019-08-12 | 2019-08-25 |  | 50% |
| 75 |  | Points de LAS | 21d | 2019-08-26 | 2019-09-15 | 74 |  |
| 76 |  | Ergonomie | 14d | 2019-08-19 | 2019-09-01 |  |  |
| 77 |  | Moteur - Echappement | 21d | 2019-09-02 | 2019-09-22 | 76 |  |
| 78 |  | Finalisation filaire | 14d | 2019-09-16 | 2019-09-29 |  |  |
| 79 |  | Seconde itération | 14d | 2019-09-30 | 2019-10-13 | 21SS, 78 |  |
| 80 |  | Diamètres des tubes | 14d | 2019-09-30 | 2019-10-13 | 78 |  |
| 81 |  | Vérif règlement | 7d | 2019-10-14 | 2019-10-20 | 80 |  |
| 82 |  | Raideur en torsions | 14d | 2019-10-14 | 2019-10-27 | 80 |  |
| 83 |  | Autres cas de charge | 14d | 2019-10-21 | 2019-11-03 |  |  |
| 84 |  | Vérif règlement | 14d | 2019-11-04 | 2019-11-17 | 82, 83 |  |
| 85 | 6.2 | **Equipements** | 58d | 2019-09-23 | 2019-11-19 |  |  |
| 86 |  | Chappes paramétrables | 35d | 2019-09-23 | 2019-10-27 |  |  |
| 87 |  | Suivi des chappes | 44d | 2019-10-07 | 2019-11-19 | 6FF |  |
| 88 |  | Anti-intrusion plate | 14d | 2019-10-14 | 2019-10-27 | 79 |  |
| 89 |  | Pare-feu | 14d | 2019-10-28 | 2019-11-10 | 88 |  |
| 90 |  | Fond plat | 14d | 2019-10-14 | 2019-10-27 | 79 |  |
| 91 | 7 | **Aéro** | 98d | 2019-08-12 | 2019-11-17 |  |  |
| 92 | 7.1 | **Carrosserie** | 63d | 2019-09-16 | 2019-11-17 |  |  |
| 93 |  | REX et étude concurrence | 14d | 2019-09-16 | 2019-09-29 |  |  |
| 94 |  | Premier version | 14d | 2019-09-30 | 2019-10-13 | 78, 93 |  |
| 95 |  | Optimisation aéro | 14d | 2019-10-14 | 2019-10-27 | 94 |  |
| 96 |  | Seconde itération | 7d | 2019-10-28 | 2019-11-03 | 79, 95 |  |
| 97 |  | Fixation aéro | 14d | 2019-11-04 | 2019-11-17 | 96 |  |
| 98 | 7.2 | **Méthode numérique** | 21d | 2019-08-19 | 2019-09-08 |  |  |
| 99 |  | Simulation mécanique | 21d | 2019-08-19 | 2019-09-08 |  |  |
| 100 | 7.3 | **Process de production** | 28d | 2019-09-02 | 2019-09-29 |  |  |
| 101 |  | Process de production | 28d | 2019-09-02 | 2019-09-29 |  |  |
| 102 | 7.4 | **Ouies** | 91d | 2019-08-12 | 2019-11-10 |  |  |
| 103 |  | Concept ouies | 21d | 2019-08-12 | 2019-09-01 |  |  |
| 104 |  | Positionnement radiateur | 14d | 2019-08-26 | 2019-09-08 |  |  |
| 105 |  | Optimisation flux radiateur | 28d | 2019-08-26 | 2019-09-22 | 104SS |  |
| 106 |  | Optimisation aéro | 14d | 2019-09-16 | 2019-09-29 |  |  |
| 107 |  | Résistance mécanique | 28d | 2019-09-30 | 2019-10-27 | 106 |  |
| 108 |  | Détermination d'un process | 28d | 2019-09-30 | 2019-10-27 | 106 |  |
| 109 |  | Test du process | 28d | 2019-10-14 | 2019-11-10 |  |  |
| 110 | 7.5 | **Aile arrière** | 56d | 2019-09-09 | 2019-11-03 |  |  |
| 111 |  | Concept d'attaches | 14d | 2019-09-09 | 2019-09-22 |  |  |
| 112 |  | Méthode de réglage | 14d | 2019-09-16 | 2019-09-29 |  |  |
| 113 |  | Modèle d'efforts sur l'aile | 7d | 2019-09-30 | 2019-10-06 | 112 |  |
| 114 |  | Dessin des inserts | 21d | 2019-10-07 | 2019-10-27 | 101, 113 |  |
| 115 |  | Simulation mécanique | 28d | 2019-10-07 | 2019-11-03 | 99, 101, 113 |  |
| 116 |  | Calcul de déflection | 21d | 2019-10-14 | 2019-11-03 |  |  |
| 117 | 7.6 | **Aile avant** | 63d | 2019-09-02 | 2019-11-03 |  |  |
| 118 |  | Simplification de l'aile | 21d | 2019-09-02 | 2019-09-22 |  |  |
| 119 |  | Concept d'attaches | 14d | 2019-09-09 | 2019-09-22 |  |  |
| 120 |  | Méthode de réglage | 14d | 2019-09-16 | 2019-09-29 |  |  |
| 121 |  | Modèle d'efforts sur l'aile | 7d | 2019-09-30 | 2019-10-06 | 120 |  |
| 122 |  | Dessin des inserts | 21d | 2019-10-07 | 2019-10-27 | 101, 121 |  |
| 123 |  | Simulation mécanique | 28d | 2019-10-07 | 2019-11-03 | 99, 101, 121 |  |
| 124 |  | Calcul de déflection | 21d | 2019-10-14 | 2019-11-03 |  |  |
| 125 | 8 | **Motorisation** | 98d | 2019-08-05 | 2019-11-10 |  | 8% |
| 126 | 8.1 | **Admission** | 56d | 2019-08-12 | 2019-10-06 |  |  |
| 127 |  | Contact fournisseur | 14d | 2019-09-02 | 2019-09-15 |  |  |
| 128 |  | Concept bride guillotine | 21d | 2019-08-12 | 2019-09-01 |  |  |
| 129 |  | Concept plenum admission | 21d | 2019-08-12 | 2019-09-01 |  |  |
| 130 |  | Etudes aéro | 28d | 2019-08-19 | 2019-09-15 |  |  |
| 131 |  | Audit Volvo | 7d | 2019-09-16 | 2019-09-22 | 130 |  |
| 132 |  | Calcul FEM | 7d | 2019-09-16 | 2019-09-22 | 130 |  |
| 133 |  | Validation Romain | 14d | 2019-09-23 | 2019-10-06 | 132 |  |
| 134 |  | Validation académiciens | 14d | 2019-09-23 | 2019-10-06 | 132 |  |
| 135 | 8.2 | **Echappement** | 56d | 2019-08-12 | 2019-10-06 |  |  |
| 136 |  | Contact Bery | 7d | 2019-09-02 | 2019-09-08 |  |  |
| 137 |  | Concept échappement | 7d | 2019-08-12 | 2019-08-18 |  |  |
| 138 |  | Volume enveloppe | 14d | 2019-08-19 | 2019-09-01 | 137 |  |
| 139 |  | CATIA | 21d | 2019-09-02 | 2019-09-22 | 138 |  |
| 140 |  | Validation Romain | 14d | 2019-09-23 | 2019-10-06 | 139 |  |

| ID | WBS | Task | Duration | Start | Finish | Predecessors | Complete |
| --- | --- | --- | --- | --- | --- | --- | --- |
| 141 |  | Validation académiciens | 14d | 2019-09-23 | 2019-10-06 | 139 |  |
| 142 | 8.3 | **Carto** | 7d | 2019-10-07 | 2019-10-13 |  |  |
| 143 |  | Prevoir passage au banc de Givors | 7d | 2019-10-07 | 2019-10-13 | 133, 134, 140, 141 |  |
| 144 | 8.4 | **Refroidissement** | 35d | 2019-08-05 | 2019-09-08 |  | 60% |
| 145 |  | Dimensionnement | 21d | 2019-08-05 | 2019-08-25 |  | 100% |
| 146 |  | Itération 2 | 14d | 2019-08-26 | 2019-09-08 | 145 |  |
| 147 | 8.5 | **Circuit d'essence** | 56d | 2019-09-16 | 2019-11-10 |  |  |
| 148 |  | Réservoir | 7d | 2019-09-16 | 2019-09-22 |  |  |
| 149 |  | Pompe à essence | 14d | 2019-09-23 | 2019-10-06 | 148 |  |
| 150 |  | Circuit d'essence | 14d | 2019-10-07 | 2019-10-20 | 149 |  |
| 151 |  | Tuyau de remplissage | 14d | 2019-10-07 | 2019-10-20 | 149 |  |
| 152 |  | Modèle CATIA | 21d | 2019-10-21 | 2019-11-10 | 150, 151 |  |
| 153 |  | Protection thermique | 7d | 2019-10-21 | 2019-10-27 | 148, 149, 150 |  |
| 154 | 8.6 | **Transmission secondaire** | 49d | 2019-09-16 | 2019-11-03 |  |  |
| 155 |  | Contacter CME et MPY | 7d | 2019-09-16 | 2019-09-22 |  |  |
| 156 |  | Piste amélioration | 14d | 2019-09-16 | 2019-09-29 |  |  |
| 157 |  | Différentiel | 7d | 2019-09-16 | 2019-09-22 |  |  |
| 158 |  | Excentriques | 21d | 2019-09-23 | 2019-10-13 | 157 |  |
| 159 |  | Porte-excentriques | 21d | 2019-09-23 | 2019-10-13 | 157 |  |
| 160 |  | Rapport de transmission secondaire | 21d | 2019-09-16 | 2019-10-06 |  |  |
| 161 |  | Pignon - Couronne | 14d | 2019-09-23 | 2019-10-06 |  |  |
| 162 |  | Porte couronne | 14d | 2019-10-07 | 2019-10-20 | 161 |  |
| 163 |  | Chainshield | 14d | 2019-10-21 | 2019-11-03 | 162 |  |
| 164 | 9 | **SEISM** | 84d | 2019-09-02 | 2019-11-24 |  |  |
| 165 | 9.1 | **Faisceau** | 84d | 2019-09-02 | 2019-11-24 |  |  |
| 166 |  | Faisceau LV | 21d | 2019-09-02 | 2019-09-22 |  |  |
| 167 |  | Acquisition de données | 14d | 2019-09-09 | 2019-09-22 |  |  |
| 168 |  | Faisceau HV | 21d | 2019-09-23 | 2019-10-13 | 166 |  |
| 169 |  | Batterie | 14d | 2019-09-30 | 2019-10-13 |  |  |
| 170 |  | Dimensionnement câble | 14d | 2019-10-07 | 2019-10-20 |  |  |
| 171 |  | Placer les boîtes | 14d | 2019-10-14 | 2019-10-27 |  |  |
| 172 |  | Contacter Souriaux | 7d | 2019-09-02 | 2019-09-08 |  |  |
| 173 |  | Choix connecteur | 14d | 2019-10-14 | 2019-10-27 | 172 |  |
| 174 |  | Modèle CATIA | 28d | 2019-10-28 | 2019-11-24 | 171, 173 |  |
| 175 | 9.2 | **Passage de rapport** | 70d | 2019-09-02 | 2019-11-10 |  |  |
| 176 |  | Dimensionnement moteur | 28d | 2019-09-02 | 2019-09-29 |  |  |
| 177 |  | Dimensionnement réducteur | 28d | 2019-09-02 | 2019-09-29 |  |  |
| 178 |  | Reprendre le code | 28d | 2019-09-30 | 2019-10-27 | 176, 177 |  |
| 179 |  | Shield | 28d | 2019-10-14 | 2019-11-10 |  |  |
| 180 | 9.3 | **Tableau de bord** | 70d | 2019-09-02 | 2019-11-10 |  |  |
| 181 |  | Liste des afficheurs | 14d | 2019-09-02 | 2019-09-15 |  |  |
| 182 |  | Commande des afficheurs | 14d | 2019-09-09 | 2019-09-22 |  |  |
| 183 |  | Liste des boutons | 14d | 2019-09-16 | 2019-09-29 | 181 |  |
| 184 |  | Dessin TdB | 14d | 2019-10-14 | 2019-10-27 | 79, 181, 183 |  |
| 185 |  | Code sans CAN | 56d | 2019-09-16 | 2019-11-10 | 181 |  |
| 186 |  | Insérer le CAN | 14d | 2019-10-28 | 2019-11-10 | 185FF |  |
| 187 |  | Dessin des cartes | 28d | 2019-10-14 | 2019-11-10 | 185FF, 186FF |  |
| 188 | 9.4 | **Palettes** | 56d | 2019-09-09 | 2019-11-03 |  |  |
| 189 |  | Concept | 21d | 2019-09-09 | 2019-09-29 |  |  |
| 190 |  | Maquette CATIA | 21d | 2019-09-16 | 2019-10-06 |  |  |
| 191 |  | Commande pour proto | 7d | 2019-10-07 | 2019-10-13 | 189, 190 |  |
| 192 |  | Impression 3D | 7d | 2019-10-07 | 2019-10-13 | 190 |  |
| 193 |  | Proto | 7d | 2019-10-14 | 2019-10-20 | 191, 192 |  |
| 194 |  | Tests | 14d | 2019-10-21 | 2019-11-03 | 193 |  |

## Version 2 (saved 2019-08-28)

Note of the change: Gantt

Last finish 2020-06-24 → 2020-09-30 (+98d).

Added:

| ID | Task | Duration | Start | Finish |
| --- | --- | --- | --- | --- |
| 12 | **Vacances ECL** | 127d | 2019-10-26 | 2020-02-29 |
| 13 | Toussaint | 10d | 2019-10-26 | 2019-11-04 |
| 14 | Noel | 17d | 2019-12-21 | 2020-01-06 |
| 15 | Hivers | 1d | 2020-02-29 | 2020-02-29 |
| 16 | **Vacances partenaires** | 99d | 2020-06-24 | 2020-09-30 |
| 17 | Giraudière | 99d | 2020-06-24 | 2020-09-30 |
| 18 | Boisard | 99d | 2020-06-24 | 2020-09-30 |
| 19 | **Global** | 363d | 2019-06-27 | 2020-06-23 |

Removed: 188 Palettes; 189 Concept; 190 Maquette CATIA; 191 Commande pour proto; 192 Impression 3D; 193 Proto; 194 Tests

## Version 3 (saved 2019-09-03)

Note of the change: Gantt et formations

Last finish stays 2020-09-30.

Added:

| ID | Task | Duration | Start | Finish | Predecessors |
| --- | --- | --- | --- | --- | --- |
| 114 | Formation choix profil d'aile | 7d | 2019-09-16 | 2019-09-22 | 115SF |

Changed:

| ID | Task | Start | Finish | Duration |
| --- | --- | --- | --- | --- |
| 99 | **Aéro** |  | 2019-11-17 → 2019-11-24 (+7d) | 98d → 105d |
| 110 | **Ouies** |  | 2019-11-10 → 2019-11-24 (+14d) | 91d → 105d |
| 112 | Positionnement radiateur |  | 2019-09-08 → 2019-09-15 (+7d) | 14d → 21d |
| 113 | Optimisation flux radiateur |  | 2019-09-22 → 2019-09-29 (+7d) | 28d → 35d |
| 115 | Optimisation aéro | 2019-09-16 → 2019-09-23 (+7d) | 2019-09-29 → 2019-10-06 (+7d) |  |
| 116 | Résistance mécanique | 2019-09-30 → 2019-10-07 (+7d) | 2019-10-27 → 2019-11-03 (+7d) |  |
| 117 | Détermination d'un process | 2019-09-30 → 2019-10-07 (+7d) | 2019-10-27 → 2019-11-03 (+7d) |  |
| 118 | Test du process | 2019-10-14 → 2019-10-28 (+14d) | 2019-11-10 → 2019-11-24 (+14d) |  |
