# Gantt EPSA

How a schedule from GanttProject changed from version to version. A marks actual dates.

## Version 1 (saved 2019-09-20)

Note of the change: GANTT et PE

| ID | WBS | Task | Duration | Start | Finish | Predecessors | Complete |
| --- | --- | --- | --- | --- | --- | --- | --- |
| 1 | 1 | **Tops** | 363d | 2019-06-27 | 2020-06-23 |  |  |
| 2 |  | Top Appro | 0d | 2019-06-27 | 2019-06-27 |  |  |
| 3 |  | Top Saison | 0d | 2019-09-30 | 2019-09-30 |  |  |
| 4 |  | Top Synthèse | 0d | 2019-10-09 | 2019-10-09 |  |  |
| 5 |  | Top Copeau 1 | 0d | 2019-11-13 | 2019-11-13 |  |  |
| 6 |  | Top Copeau 2 | 0d | 2019-11-20 | 2019-11-20 |  |  |
| 7 |  | Top Organe | 0d | 2020-02-05 | 2020-02-05 |  |  |
| 8 |  | Top Véhicule | 0d | 2020-02-19 | 2020-02-19 |  |  |
| 9 |  | Top Moteur | 0d | 2020-03-04 | 2020-03-04 |  |  |
| 10 |  | Top Qualif | 0d | 2020-03-17 | 2020-03-17 |  |  |
| 11 |  | Top Compet | 0d | 2020-06-24 | 2020-06-24 |  |  |
| 12 | 2 | **Vacances ECL** | 127d | 2019-10-26 | 2020-02-29 |  |  |
| 13 |  | Toussaint | 10d | 2019-10-26 | 2019-11-04 |  |  |
| 14 |  | Noel | 17d | 2019-12-21 | 2020-01-06 |  |  |
| 15 |  | Hivers | 1d | 2020-02-29 | 2020-02-29 |  |  |
| 16 | 3 | **Vacances partenaires** | 99d | 2020-06-24 | 2020-09-30 |  |  |
| 17 |  | Giraudière | 99d | 2020-06-24 | 2020-09-30 |  |  |
| 18 |  | Boisard | 99d | 2020-06-24 | 2020-09-30 |  |  |
| 19 | 4 | **Global** | 363d | 2019-06-27 | 2020-06-23 |  |  |
| 20 |  | Livrables | 363d | 2019-06-27 | 2020-06-23 | 2, 11FF |  |
| 21 |  | Carnet de conception | 51d | 2019-08-01 | 2019-09-20 |  |  |
| 22 |  | Nomenclature | 51d | 2019-08-01 | 2019-09-20 |  |  |
| 23 | 5 | **LAS** | 110d | 2019-08-19 | 2019-12-06 |  | 4% |
| 24 | 5.1 | **Cinématique** | 63d | 2019-08-19 | 2019-10-20 |  | 15% |
| 25 |  | Gabarit de châssis | 14d | 2019-09-16 | 2019-09-29 |  |  |
| 26 |  | Points de LAS avant | 35d | 2019-08-19 | 2019-09-22 |  | 30% |
| 27 |  | Points de LAS arrière | 28d | 2019-08-26 | 2019-09-22 |  | 20% |
| 28 |  | Seconde itération | 28d | 2019-09-23 | 2019-10-20 | 26, 27 |  |
| 29 | 5.2 | **Cas de charge** | 62d | 2019-09-16 | 2019-11-16 |  |  |
| 30 |  | Paul Clauzel | 3d | 2019-09-16 | 2019-09-18 |  |  |
| 31 |  | LAS Auto | 14d | 2019-09-19 | 2019-10-02 | 30 |  |
| 32 |  | Modèle | 7d | 2019-10-03 | 2019-10-09 | 31 |  |
| 33 |  | Cas de charge | 14d | 2019-10-10 | 2019-10-23 | 32 |  |
| 34 |  | Vérification | 7d | 2019-10-24 | 2019-10-30 | 33 |  |
| 35 |  | Itérations | 7d | 2019-10-31 | 2019-11-06 | 34 |  |
| 36 |  | Fin des cas de charges | 10d | 2019-11-07 | 2019-11-16 | 35 |  |
| 37 | 5.3 | **Roue équipée** | 110d | 2019-08-19 | 2019-12-06 |  | 12% |
| 38 |  | Choix des pneus | 12d | 2019-08-19 | 2019-08-30 | 26SS | 100% |
| 39 |  | Architecture | 7d | 2019-10-07 | 2019-10-13 |  |  |
| 40 |  | Modifications | 7d | 2019-10-07 | 2019-10-13 | 39SS |  |
| 41 |  | Frette de frein | 7d | 2019-10-14 | 2019-10-20 | 40 |  |
| 42 |  | Ebauche CATIA | 14d | 2019-10-21 | 2019-11-03 | 41 |  |
| 43 |  | Retour points de LAS | 14d | 2019-10-21 | 2019-11-03 | 42SS |  |
| 44 |  | Optimisation | 26d | 2019-11-04 | 2019-11-29 | 42 |  |
| 45 |  | Fabricabilité | 7d | 2019-11-30 | 2019-12-06 | 44 |  |
| 46 | 5.4 | **Triangles** | 87d | 2019-09-09 | 2019-12-04 |  |  |
| 47 |  | Choix réglage | 7d | 2019-09-16 | 2019-09-22 |  |  |
| 48 |  | Dimensionnement biellettes | 7d | 2019-09-23 | 2019-09-29 | 47 |  |
| 49 |  | Dimensionnement visserie | 7d | 2019-09-23 | 2019-09-29 | 47 |  |
| 50 |  | Choix rotules | 7d | 2019-09-30 | 2019-10-06 | 49 |  |
| 51 |  | Choix entretoises | 7d | 2019-10-07 | 2019-10-13 | 50 |  |
| 52 |  | Concertation | 7d | 2019-09-09 | 2019-09-15 |  |  |
| 53 |  | Dimenssionnement des tubes | 7d | 2019-10-24 | 2019-10-30 | 33, 52 |  |
| 54 |  | Dimensionnement des inserts | 7d | 2019-10-31 | 2019-11-06 | 53 |  |
| 55 |  | Essais collages | 28d | 2019-11-07 | 2019-12-04 | 54 |  |
| 56 | 5.5 | **Suspension** | 70d | 2019-08-19 | 2019-10-27 |  |  |
| 57 |  | Contacter GTE | 7d | 2019-08-19 | 2019-08-25 |  |  |
| 58 |  | Pivot | 7d | 2019-09-30 | 2019-10-06 |  |  |
| 59 |  | Basculeurs | 14d | 2019-10-14 | 2019-10-27 |  |  |
| 60 | 5.6 | **Anti-roulis** | 28d | 2019-09-30 | 2019-10-27 |  |  |
| 61 |  | Modèle efforts | 14d | 2019-09-30 | 2019-10-13 |  |  |
| 62 |  | Dimenssionnement de la barre de torsion | 14d | 2019-10-14 | 2019-10-27 | 61 |  |
| 63 |  | Couteaux | 14d | 2019-09-30 | 2019-10-13 |  |  |
| 64 |  | Pivot | 7d | 2019-10-14 | 2019-10-20 | 63 |  |
| 65 |  | Coussinets | 7d | 2019-10-21 | 2019-10-27 | 64 |  |
| 66 | 5.7 | **Direction** | 35d | 2019-09-16 | 2019-10-20 |  |  |
| 67 |  | Cardan | 14d | 2019-09-16 | 2019-09-29 |  |  |
| 68 |  | Colonne de direction | 7d | 2019-09-30 | 2019-10-06 | 67 |  |
| 69 |  | Finalisation cinématique | 7d | 2019-10-07 | 2019-10-13 | 26, 68 |  |
| 70 |  | Pivot et manchon | 7d | 2019-10-14 | 2019-10-20 | 69 |  |

| ID | WBS | Task | Duration | Start | Finish | Predecessors | Complete |
| --- | --- | --- | --- | --- | --- | --- | --- |
| 71 | 5.8 | **Freinage** | 21d | 2019-09-16 | 2019-10-06 |  |  |
| 72 |  | Répartition freinage | 14d | 2019-09-16 | 2019-09-29 |  |  |
| 73 |  | Dimenssionnement disques | 14d | 2019-09-23 | 2019-10-06 |  |  |
| 74 |  | Dimenssionnement étrier | 14d | 2019-09-23 | 2019-10-06 |  |  |
| 75 | 5.9 | **Pédalier** | 49d | 2019-09-16 | 2019-11-03 |  |  |
| 76 |  | Accélérateur | 35d | 2019-09-16 | 2019-10-20 |  |  |
| 77 |  | Frein | 35d | 2019-09-30 | 2019-11-03 |  |  |
| 78 | 6 | **Frame** | 100d | 2019-08-12 | 2019-11-19 |  | 10% |
| 79 | 6.1 | **Structure tubulaire** | 98d | 2019-08-12 | 2019-11-17 |  | 23% |
| 80 |  | Premières esquisses | 28d | 2019-08-12 | 2019-09-08 |  | 100% |
| 81 |  | Points de LAS | 21d | 2019-09-09 | 2019-09-29 | 80 | 30% |
| 82 |  | Moteur - Echappement | 21d | 2019-09-09 | 2019-09-29 | 80 |  |
| 83 |  | Finalisation filaire | 14d | 2019-09-16 | 2019-09-29 |  |  |
| 84 |  | Seconde itération | 14d | 2019-09-30 | 2019-10-13 | 81, 82, 83 |  |
| 85 |  | Vérif règlement | 7d | 2019-10-14 | 2019-10-20 | 84 |  |
| 86 |  | Raideur en torsions | 14d | 2019-10-14 | 2019-10-27 |  |  |
| 87 |  | Autres cas de charge | 14d | 2019-10-21 | 2019-11-03 |  |  |
| 88 |  | Vérif règlement | 14d | 2019-11-04 | 2019-11-17 | 86, 87 |  |
| 89 |  | Ergonomie | 62d | 2019-09-17 | 2019-11-17 | 88FF |  |
| 90 | 6.3 | **Equipements** | 58d | 2019-09-23 | 2019-11-19 |  |  |
| 91 |  | Suivi des chappes | 58d | 2019-09-23 | 2019-11-19 | 6FF |  |
| 92 |  | Anti-intrusion plate | 35d | 2019-10-14 | 2019-11-17 | 84 |  |
| 93 |  | Pare-feu | 35d | 2019-10-14 | 2019-11-17 | 84 |  |
| 94 |  | Fond plat | 35d | 2019-10-14 | 2019-11-17 | 84 |  |
| 95 | 7 | **Aéro** | 91d | 2019-08-19 | 2019-11-17 |  | 3% |
| 96 | 7.1 | **Fabrication** | 23d | 2019-09-04 | 2019-09-26 |  | 43% |
| 97 | 7.1.1 | **Démarchage** | 19d | 2019-09-04 | 2019-09-22 |  | 63% |
| 98 |  | Rédaction du mail | 7d | 2019-09-04 | 2019-09-10 |  | 100% |
| 99 |  | Recherche de contacts | 19d | 2019-09-04 | 2019-09-22 |  | 50% |
| 100 | 7.1.2 | **Audit Safran** | 10d | 2019-09-17 | 2019-09-26 |  | 5% |
| 101 |  | CdCF | 9d | 2019-09-17 | 2019-09-25 | 106SF |  |
| 102 |  | Méthode d'attache | 9d | 2019-09-17 | 2019-09-25 | 106SF | 25% |
| 103 |  | Process de production | 9d | 2019-09-17 | 2019-09-25 | 106SF |  |
| 104 |  | Méthode de simulation | 9d | 2019-09-17 | 2019-09-25 | 106SF |  |
| 105 |  | Diaporama à faire | 3d | 2019-09-23 | 2019-09-25 | 106SF |  |
| 106 |  | Audit | 1d | 2019-09-26 | 2019-09-26 |  |  |
| 107 | 7.2 | **Méthode numérique** | 35d | 2019-08-19 | 2019-09-22 |  |  |
| 108 |  | Simulation mécanique | 35d | 2019-08-19 | 2019-09-22 |  |  |
| 109 | 7.3 | **Carrosserie** | 63d | 2019-09-16 | 2019-11-17 |  |  |
| 110 |  | REX et étude concurrence | 14d | 2019-09-16 | 2019-09-29 |  |  |
| 111 |  | Premier version | 14d | 2019-09-30 | 2019-10-13 | 83, 110 |  |
| 112 |  | Optimisation aéro | 14d | 2019-10-14 | 2019-10-27 | 111 |  |
| 113 |  | Seconde itération | 7d | 2019-10-28 | 2019-11-03 | 84, 112 |  |
| 114 |  | Fixation aéro | 14d | 2019-11-04 | 2019-11-17 | 113 |  |
| 115 | 7.4 | **Ouies** | 28d | 2019-09-17 | 2019-10-14 |  |  |
| 116 |  | Concept ouies | 14d | 2019-09-17 | 2019-09-30 |  |  |
| 117 |  | Tunnel radiateur | 28d | 2019-09-17 | 2019-10-14 | 116SS |  |
| 118 | 7.5 | **Aile arrière** | 63d | 2019-09-09 | 2019-11-10 |  | 4% |
| 119 |  | Étude aéro | 14d | 2019-09-09 | 2019-09-22 |  |  |
| 120 |  | Concept d'attaches | 21d | 2019-09-09 | 2019-09-29 |  | 30% |
| 121 |  | Méthode de réglage | 14d | 2019-09-16 | 2019-09-29 |  |  |
| 122 |  | Modèle d'efforts sur l'aile | 7d | 2019-09-30 | 2019-10-06 | 121 |  |
| 123 |  | Dessin des inserts | 21d | 2019-09-30 | 2019-10-20 | 120, 121 |  |
| 124 |  | Simulation mécanique | 28d | 2019-10-07 | 2019-11-03 | 106, 108, 122 |  |
| 125 |  | Calcul de déflection | 28d | 2019-10-14 | 2019-11-10 |  |  |
| 126 | 7.6 | **Aile avant** | 63d | 2019-09-09 | 2019-11-10 |  |  |
| 127 |  | Étude aéro | 56d | 2019-09-09 | 2019-11-03 |  |  |
| 128 |  | Concept d'attaches | 28d | 2019-09-09 | 2019-10-06 |  |  |
| 129 |  | Méthode de réglage | 21d | 2019-09-16 | 2019-10-06 |  |  |
| 130 |  | Modèle d'efforts sur l'aile | 7d | 2019-10-07 | 2019-10-13 | 129 |  |
| 131 |  | Dessin des inserts | 21d | 2019-10-07 | 2019-10-27 | 130SS |  |
| 132 |  | Simulation mécanique | 28d | 2019-10-14 | 2019-11-10 | 106, 108, 130 |  |
| 133 |  | Calcul de déflection | 21d | 2019-10-14 | 2019-11-03 |  |  |
| 134 | 7.7 | **Diffuseur** | 56d | 2019-09-09 | 2019-11-03 |  |  |
| 135 |  | Concept aéro | 21d | 2019-09-09 | 2019-09-29 |  |  |
| 136 |  | Dessin CATIA | 35d | 2019-09-16 | 2019-10-20 |  |  |
| 137 |  | Simulation aéro | 42d | 2019-09-23 | 2019-11-03 |  |  |
| 138 | 8 | **Motorisation** | 91d | 2019-08-19 | 2019-11-17 |  | 16% |
| 139 | 8.1 | **Admission** | 56d | 2019-09-16 | 2019-11-10 |  |  |
| 140 |  | Contact fournisseur | 14d | 2019-09-16 | 2019-09-29 |  |  |

| ID | WBS | Task | Duration | Start | Finish | Predecessors | Complete |
| --- | --- | --- | --- | --- | --- | --- | --- |
| 141 |  | Concept bride guillotine | 21d | 2019-09-16 | 2019-10-06 |  |  |
| 142 |  | Concept plenum admission | 21d | 2019-09-16 | 2019-10-06 |  |  |
| 143 |  | Etudes aéro | 35d | 2019-09-16 | 2019-10-20 |  |  |
| 144 |  | Audit Volvo | 7d | 2019-10-21 | 2019-10-27 | 143 |  |
| 145 |  | Calcul FEM | 7d | 2019-10-21 | 2019-10-27 | 143 |  |
| 146 |  | Validation Romain | 14d | 2019-10-28 | 2019-11-10 | 145 |  |
| 147 |  | Validation académiciens | 14d | 2019-10-28 | 2019-11-10 | 145 |  |
| 148 | 8.2 | **Echappement** | 49d | 2019-08-19 | 2019-10-06 |  | 38% |
| 149 |  | Contact Bery | 7d | 2019-09-16 | 2019-09-22 |  |  |
| 150 |  | Concept échappement | 7d | 2019-08-19 | 2019-08-25 |  | 100% |
| 151 |  | CATIA | 28d | 2019-08-26 | 2019-09-22 | 150 | 70% |
| 152 |  | Validation Romain | 14d | 2019-09-23 | 2019-10-06 | 151 |  |
| 153 |  | Validation académiciens | 14d | 2019-09-23 | 2019-10-06 | 151 |  |
| 154 | 8.3 | **Carto** | 7d | 2019-11-11 | 2019-11-17 |  |  |
| 155 |  | Prevoir passage au banc de Givors | 7d | 2019-11-11 | 2019-11-17 | 146, 147, 152, 153 |  |
| 156 | 8.4 | **Refroidissement** | 42d | 2019-08-26 | 2019-10-06 |  | 60% |
| 157 |  | Dimensionnement | 21d | 2019-08-26 | 2019-09-15 |  | 100% |
| 158 |  | Placer les radiateurs | 14d | 2019-09-23 | 2019-10-06 | 157, 167 |  |
| 159 | 8.5 | **Circuit d'essence** | 56d | 2019-09-16 | 2019-11-10 |  |  |
| 160 |  | Réservoir | 7d | 2019-09-16 | 2019-09-22 |  |  |
| 161 |  | Pompe à essence | 14d | 2019-09-23 | 2019-10-06 | 160 |  |
| 162 |  | Circuit d'essence | 14d | 2019-10-07 | 2019-10-20 | 161 |  |
| 163 |  | Tuyau de remplissage | 14d | 2019-10-07 | 2019-10-20 | 161 |  |
| 164 |  | Modèle CATIA | 21d | 2019-10-21 | 2019-11-10 | 162, 163 |  |
| 165 |  | Protection thermique | 7d | 2019-10-21 | 2019-10-27 | 160, 161, 162 |  |
| 166 | 8.6 | **Transmission secondaire** | 63d | 2019-09-16 | 2019-11-17 |  |  |
| 167 |  | Placer le moteur | 7d | 2019-09-16 | 2019-09-22 |  |  |
| 168 |  | Piste amélioration | 14d | 2019-09-16 | 2019-09-29 |  |  |
| 169 |  | Différentiel | 14d | 2019-09-16 | 2019-09-29 |  |  |
| 170 |  | Excentriques | 21d | 2019-09-30 | 2019-10-20 | 169 |  |
| 171 |  | Porte-excentriques | 21d | 2019-09-30 | 2019-10-20 | 169 |  |
| 172 |  | Rapport de transmission secondaire | 35d | 2019-09-16 | 2019-10-20 |  |  |
| 173 |  | Pignon - Couronne | 21d | 2019-09-30 | 2019-10-20 | 172FF |  |
| 174 |  | Porte couronne | 14d | 2019-10-21 | 2019-11-03 | 173 |  |
| 175 |  | Chainshield | 14d | 2019-11-04 | 2019-11-17 | 174 |  |
| 176 | 9 | **SEISM** | 84d | 2019-09-02 | 2019-11-24 |  | 19% |
| 177 | 9.1 | **Faisceau** | 84d | 2019-09-02 | 2019-11-24 |  | 31% |
| 178 |  | Architecture faisceau | 14d | 2019-09-02 | 2019-09-15 |  | 100% |
| 179 |  | Schema faisceau | 28d | 2019-09-16 | 2019-10-13 | 178 | 100% |
| 180 |  | Batterie | 14d | 2019-09-30 | 2019-10-13 |  |  |
| 181 |  | Dimensionnement câble | 14d | 2019-10-07 | 2019-10-20 |  |  |
| 182 |  | Placer les boîtes | 14d | 2019-10-14 | 2019-10-27 |  |  |
| 183 |  | Contacter Souriaux | 7d | 2019-09-16 | 2019-09-22 |  |  |
| 184 |  | Choix connecteur | 14d | 2019-10-14 | 2019-10-27 | 183 |  |
| 185 |  | Modèle CATIA | 28d | 2019-10-28 | 2019-11-24 | 182, 184 |  |
| 186 | 9.2 | **Passage de rapport** | 70d | 2019-09-02 | 2019-11-10 |  | 5% |
| 187 |  | Dimensionnement moteur | 28d | 2019-09-02 | 2019-09-29 |  | 10% |
| 188 |  | Dimensionnement réducteur | 28d | 2019-09-02 | 2019-09-29 |  | 10% |
| 189 |  | Reprendre le code | 28d | 2019-09-30 | 2019-10-27 | 187, 188 |  |
| 190 |  | Shield | 28d | 2019-10-14 | 2019-11-10 |  |  |

## Version 2 (saved 2019-09-26)

Note of the change: Formation et Mail

Last finish stays 2020-09-30. Complete tasks 7 → 9.

Added:

| ID | Task | Duration | Start | Finish | Predecessors | Resources |
| --- | --- | --- | --- | --- | --- | --- |
| 65 | Théorie de direction | 14d | 2019-09-23 | 2019-10-06 |  | MKI; SGX |
| 74 | Durites | 21d | 2019-10-28 | 2019-11-17 | 73 |  |
| 152 | Vérification intégration chassis | 14d | 2019-09-23 | 2019-10-06 | 151 |  |

Removed: 31 LAS Auto; 57 Contacter GTE

Changed:

| ID | Task | Start | Finish | Duration | Complete | Predecessors | Other |
| --- | --- | --- | --- | --- | --- | --- | --- |
| 4 | Top Synthèse | 2019-10-09 → 2019-10-16 (+7d) | 2019-10-09 → 2019-10-16 (+7d) |  |  |  |  |
| 23 | **LAS** |  |  |  | 4% → 7% |  |  |
| 24 | **Cinématique** |  | 2019-10-20 → 2019-10-27 (+7d) | 63d → 70d | 15% → 40% |  |  |
| 26 | Points de LAS avant |  | 2019-09-22 → 2019-09-29 (+7d) | 35d → 42d |  |  |  |
| 27 | Points de LAS arrière |  | 2019-09-22 → 2019-09-29 (+7d) | 28d → 35d | 20% → 100% |  |  |
| 28 | Seconde itération | 2019-09-23 → 2019-09-30 (+7d) | 2019-10-20 → 2019-10-27 (+7d) |  |  |  |  |
| 29 | **Cas de charge** | 2019-09-16 → 2019-09-23 (+7d) | 2019-11-16 → 2019-11-09 (-7d) | 62d → 48d |  |  |  |
| 30 | Paul Clauzel | 2019-09-16 → 2019-09-23 (+7d) | 2019-09-18 → 2019-09-25 (+7d) |  |  |  |  |
| 31 | Modèle | 2019-10-03 → 2019-09-26 (-7d) | 2019-10-09 → 2019-10-02 (-7d) |  |  | LAS Auto → 30 |  |
| 32 | Cas de charge | 2019-10-10 → 2019-10-03 (-7d) | 2019-10-23 → 2019-10-16 (-7d) |  |  |  |  |
| 33 | Vérification | 2019-10-24 → 2019-10-17 (-7d) | 2019-10-30 → 2019-10-23 (-7d) |  |  |  |  |
| 34 | Itérations | 2019-10-31 → 2019-10-24 (-7d) | 2019-11-06 → 2019-10-30 (-7d) |  |  |  |  |
| 35 | Fin des cas de charges | 2019-11-07 → 2019-10-31 (-7d) | 2019-11-16 → 2019-11-09 (-7d) |  |  |  |  |
| 45 | **Triangles** |  | 2019-12-04 → 2019-11-27 (-7d) | 87d → 80d |  |  |  |
| 46 | Choix réglage | 2019-09-16 → 2019-09-30 (+14d) | 2019-09-22 → 2019-10-06 (+14d) |  |  |  |  |
| 47 | Dimensionnement biellettes | 2019-09-23 → 2019-10-07 (+14d) | 2019-09-29 → 2019-10-13 (+14d) |  |  |  |  |
| 48 | Dimensionnement visserie | 2019-09-23 → 2019-10-07 (+14d) | 2019-09-29 → 2019-10-13 (+14d) |  |  |  |  |
| 49 | Choix rotules | 2019-09-30 → 2019-10-14 (+14d) | 2019-10-06 → 2019-10-20 (+14d) |  |  |  |  |
| 50 | Choix entretoises | 2019-10-07 → 2019-10-21 (+14d) | 2019-10-13 → 2019-10-27 (+14d) |  |  |  |  |
| 52 | Dimenssionnement des tubes | 2019-10-24 → 2019-10-17 (-7d) | 2019-10-30 → 2019-10-23 (-7d) |  |  |  |  |
| 53 | Dimensionnement des inserts | 2019-10-31 → 2019-10-24 (-7d) | 2019-11-06 → 2019-10-30 (-7d) |  |  |  |  |
| 54 | Essais collages | 2019-11-07 → 2019-10-31 (-7d) | 2019-12-04 → 2019-11-27 (-7d) |  |  |  |  |
| 55 | **Suspension** | 2019-08-19 → 2019-09-30 (+42d) |  | 70d → 28d |  |  |  |
| 64 | **Direction** | 2019-09-16 → 2019-09-23 (+7d) | 2019-10-20 → 2019-11-10 (+21d) | 35d → 49d |  |  |  |
| 66 | Cardan | 2019-09-16 → 2019-10-07 (+21d) | 2019-09-29 → 2019-10-20 (+21d) |  |  | none → 65 |  |
| 67 | Colonne de direction | 2019-09-30 → 2019-10-21 (+21d) | 2019-10-06 → 2019-10-27 (+21d) |  |  |  | resources none → SGX |
| 68 | Finalisation cinématique | 2019-10-07 → 2019-10-28 (+21d) | 2019-10-13 → 2019-11-03 (+21d) |  |  |  | resources none → SGX |
| 69 | Pivot et manchon | 2019-10-14 → 2019-11-04 (+21d) | 2019-10-20 → 2019-11-10 (+21d) |  |  |  | resources none → SGX |
| 70 | **Freinage** | 2019-09-16 → 2019-09-23 (+7d) | 2019-10-06 → 2019-11-17 (+42d) | 21d → 56d |  |  |  |
| 71 | Répartition freinage | 2019-09-16 → 2019-09-23 (+7d) | 2019-09-29 → 2019-10-06 (+7d) |  |  |  |  |
| 72 | Dimenssionnement disques | 2019-09-23 → 2019-10-07 (+14d) | 2019-10-06 → 2019-10-27 (+21d) | 14d → 21d |  | none → 71 |  |
| 73 | Dimenssionnement étrier | 2019-09-23 → 2019-10-07 (+14d) | 2019-10-06 → 2019-10-27 (+21d) | 14d → 21d |  | none → 71 |  |
| 95 | **Aéro** |  |  |  | 3% → 4% |  |  |
| 116 | Concept ouies |  |  |  |  |  | resources PTS → none |
| 117 | Tunnel radiateur |  |  |  |  |  | resources PTS → none |
| 118 | **Aile arrière** |  |  |  | 4% → 6% |  |  |
| 120 | Concept d'attaches |  | 2019-09-29 → 2019-10-06 (+7d) | 21d → 28d |  |  | resources TMN → TCN |
| 121 | Méthode de réglage | 2019-09-16 → 2019-09-23 (+7d) | 2019-09-29 → 2019-10-06 (+7d) |  |  |  | resources TMN → TCN |
| 122 | Modèle d'efforts sur l'aile | 2019-09-30 → 2019-10-07 (+7d) | 2019-10-06 → 2019-10-13 (+7d) |  |  |  |  |
| 123 | Dessin des inserts | 2019-09-30 → 2019-10-07 (+7d) | 2019-10-20 → 2019-10-27 (+7d) |  |  |  | resources TMN → TCN |
| 124 | Simulation mécanique | 2019-10-07 → 2019-10-14 (+7d) | 2019-11-03 → 2019-11-10 (+7d) |  |  |  |  |
| 126 | **Aile avant** |  | 2019-11-10 → 2019-11-17 (+7d) | 63d → 70d |  |  |  |
| 128 | Concept d'attaches | 2019-09-09 → 2019-09-16 (+7d) |  | 28d → 21d |  |  | resources TMN → TCN |
| 129 | Méthode de réglage | 2019-09-16 → 2019-09-23 (+7d) | 2019-10-06 → 2019-10-13 (+7d) |  |  |  | resources TMN → TCN |
| 130 | Modèle d'efforts sur l'aile | 2019-10-07 → 2019-10-14 (+7d) | 2019-10-13 → 2019-10-20 (+7d) |  |  |  |  |
| 131 | Dessin des inserts | 2019-10-07 → 2019-10-14 (+7d) | 2019-10-27 → 2019-11-03 (+7d) |  |  |  | resources TMN → TCN |
| 132 | Simulation mécanique | 2019-10-14 → 2019-10-21 (+7d) | 2019-11-10 → 2019-11-17 (+7d) |  |  |  |  |
| 138 | **Motorisation** |  |  |  | 16% → 17% |  |  |
| 148 | **Echappement** |  | 2019-10-06 → 2019-10-20 (+14d) | 49d → 63d | 38% → 41% |  |  |
| 149 | Contact Bery | 2019-09-16 → 2019-09-23 (+7d) | 2019-09-22 → 2019-09-29 (+7d) |  |  |  |  |
| 151 | CATIA |  |  |  | 70% → 100% |  |  |
| 153 | Validation Romain | 2019-09-23 → 2019-10-07 (+14d) | 2019-10-06 → 2019-10-20 (+14d) |  |  | 151 → 152 |  |
| 154 | Validation académiciens | 2019-09-23 → 2019-10-07 (+14d) | 2019-10-06 → 2019-10-20 (+14d) |  |  | 151 → 152 |  |
| 160 | **Circuit d'essence** | 2019-09-16 → 2019-09-23 (+7d) | 2019-11-10 → 2019-11-17 (+7d) |  |  |  |  |
| 161 | Réservoir | 2019-09-16 → 2019-09-23 (+7d) | 2019-09-22 → 2019-10-13 (+21d) | 7d → 21d |  |  |  |
| 162 | Pompe à essence | 2019-09-23 → 2019-09-30 (+7d) | 2019-10-06 → 2019-10-13 (+7d) |  |  | 161 → none |  |
| 163 | Circuit d'essence | 2019-10-07 → 2019-10-14 (+7d) | 2019-10-20 → 2019-10-27 (+7d) |  |  |  |  |
| 164 | Tuyau de remplissage | 2019-10-07 → 2019-10-14 (+7d) | 2019-10-20 → 2019-10-27 (+7d) |  |  |  |  |
| 165 | Modèle CATIA | 2019-10-21 → 2019-10-28 (+7d) | 2019-11-10 → 2019-11-17 (+7d) |  |  |  |  |
| 166 | Protection thermique | 2019-10-21 → 2019-10-28 (+7d) | 2019-10-27 → 2019-11-03 (+7d) |  |  |  |  |

## Version 3 (saved 2019-09-29)

Note of the change: Gantt

Last finish stays 2020-09-30. Complete tasks 9 → 11.

Added:

| ID | Task | Duration | Start | Finish |
| --- | --- | --- | --- | --- |
| 18 | Toussaint | 9d | 2019-10-26 | 2019-11-03 |
| 19 | Noel | 16d | 2019-12-21 | 2020-01-05 |

Changed:

| ID | Task | Start | Finish | Duration | Complete |
| --- | --- | --- | --- | --- | --- |
| 13 | Toussaint |  | 2019-11-04 → 2019-11-03 (-1d) | 10d → 9d |  |
| 14 | Noel |  | 2020-01-06 → 2020-01-05 (-1d) | 17d → 16d |  |
| 16 | **Vacances partenaires** | 2020-06-24 → 2019-10-26 (-242d) |  | 99d → 341d |  |
| 17 | **Giraudière** | 2020-06-24 → 2019-10-26 (-242d) | 2020-09-30 → 2020-01-05 (-269d) | 99d → 72d |  |
| 25 | **LAS** |  |  |  | 7% → 12% |
| 26 | **Cinématique** |  | 2019-10-27 → 2019-10-13 (-14d) | 70d → 56d | 40% → 86% |
| 27 | Gabarit de châssis |  |  |  | 0% → 100% |
| 28 | Points de LAS avant |  |  |  | 30% → 100% |
| 30 | Seconde itération |  | 2019-10-27 → 2019-10-13 (-14d) | 28d → 14d |  |
| 48 | Choix réglage | 2019-09-30 → 2019-10-07 (+7d) | 2019-10-06 → 2019-10-13 (+7d) |  |  |
| 49 | Dimensionnement biellettes | 2019-10-07 → 2019-10-14 (+7d) | 2019-10-13 → 2019-10-20 (+7d) |  |  |
| 50 | Dimensionnement visserie | 2019-10-07 → 2019-10-14 (+7d) | 2019-10-13 → 2019-10-20 (+7d) |  |  |
| 51 | Choix rotules | 2019-10-14 → 2019-10-21 (+7d) | 2019-10-20 → 2019-10-27 (+7d) |  |  |
| 52 | Choix entretoises | 2019-10-21 → 2019-10-28 (+7d) | 2019-10-27 → 2019-11-03 (+7d) |  |  |
